# CRO - Cronograma - E-commerce V2

Schedule from MS Project, 2021-09-28 to 2021-12-01, costs in R$, A marks actual dates.

## Calendars

- Padrão: Mon-Fri 09:00-12:00, 13:00-18:00; Sat-Sun off.

## Resources

| Resource | Rate |
| --- | --- |
| José | 100 |
| Jubeto | 100 |
| Cliente |  |
| Grupo Externo | 100 |
| João | 100 |

## Schedule

| ID | WBS | Task | Type | Duration | Start | Finish | Predecessors | Complete | Remaining | Baseline start | Baseline finish | Baseline duration | Total slack | Resources | Work | Actual work | Cost | Baseline cost | Actual cost |
| --- | --- | --- | --- | --- | --- | --- | --- | --- | --- | --- | --- | --- | --- | --- | --- | --- | --- | --- | --- |
| 1 | 1 | **Projeto E-commerce** |  | 46.06d | 2021-09-28 09:00 A | 2021-12-01 09:30 |  | 56% | 20.07d | 2021-09-28 09:00 | 2021-12-01 09:30 | 46.06d | 0d |  | 228.5h | 99h | 22,350 | 23,700 | 9,900 |
| 2 | 1.1 | **Prospecção** |  | 7.38d | 2021-09-28 09:00 A | 2021-10-07 12:00 A |  | 100% |  | 2021-09-28 09:00 | 2021-10-07 12:00 | 7.38d |  |  | 11h | 11h | 1,100 | 1,150 | 1,100 |
| 3 | 1.1.1 | **PETEC** |  | 4d | 2021-09-28 09:00 A | 2021-10-04 09:00 A |  | 100% |  | 2021-09-28 09:00 | 2021-10-04 09:00 | 4d |  |  | 6h | 6h | 600 | 700 | 600 |
| 4 | 1.1.1.1 | Estudar Dominio de Aplicação | manual | 1d | 2021-09-28 09:00 A | 2021-09-28 18:00 A |  | 100% |  | 2021-09-28 09:00 | 2021-09-28 18:00 | 1d |  | José | 1h | 1h | 100 | 100 | 100 |
| 5 | 1.1.1.2 | Reunir-se com Fornecedor de Requisitos | manual | 1d | 2021-09-29 09:00 A | 2021-09-29 18:00 A | 4 | 100% |  | 2021-09-29 09:00 | 2021-09-29 18:00 | 1d |  | José | 1h | 1h | 100 | 100 | 100 |
| 6 | 1.1.1.3 | Redigir PETEC | manual | 0.75d | 2021-09-30 09:00 A | 2021-09-30 16:00 A | 5 | 100% |  | 2021-09-30 09:00 | 2021-09-30 18:00 | 1d |  | José | 3h | 3h | 300 | 400 | 300 |
| 7 | 1.1.1.4 | Revisar Proposta Técnica | manual | 1d | 2021-10-01 09:00 A | 2021-10-01 18:00 A | 6 | 100% |  | 2021-10-01 09:00 | 2021-10-01 18:00 | 1d |  | Jubeto | 1h | 1h | 100 | 100 | 100 |
| 8 | 1.1.1.5 | Aprovar PTEC | milestone, manual | 0d | 2021-10-04 09:00 A | 2021-10-04 09:00 A | 7 | 100% |  | 2021-10-04 09:00 | 2021-10-04 09:00 | 0d |  | Cliente |  |  |  |  |  |
| 9 | 1.1.2 | **Est. Prel. Tam.** |  | 2d | 2021-10-05 09:00 A | 2021-10-06 18:00 A |  | 100% |  | 2021-10-05 09:00 | 2021-10-06 18:00 | 2d |  |  | 1.5h | 1.5h | 150 | 150 | 150 |
| 10 | 1.1.2.1 | Estimar Tamanho do Projeto | manual | 1d | 2021-10-05 09:00 A | 2021-10-05 18:00 A | 8 | 100% |  | 2021-10-05 09:00 | 2021-10-05 18:00 | 1d |  | Jubeto; João | 1h | 1h | 100 | 100 | 100 |
| 11 | 1.1.2.2 | Revisar Estimativa de Tamanho do Projeto | manual | 1d | 2021-10-06 09:00 A | 2021-10-06 18:00 A | 10 | 100% |  | 2021-10-06 09:00 | 2021-10-06 18:00 | 1d |  | Grupo Externo | 0.5h | 0.5h | 50 | 50 | 50 |
| 12 | 1.1.3 | **Est. Prel. Cronograma e Orçamento** |  | 0.38d | 2021-10-07 09:00 A | 2021-10-07 12:00 A |  | 100% |  | 2021-10-07 09:00 | 2021-10-07 12:00 | 0.38d |  |  | 3.5h | 3.5h | 350 | 300 | 350 |
| 13 | 1.1.3.1 | Elaborar Cronograma e Orçamento Preliminares |  | 0.38d | 2021-10-07 09:00 A | 2021-10-07 12:00 A | 11 | 100% |  | 2021-10-07 09:00 | 2021-10-07 11:00 | 0.25d |  | João | 3h | 3h | 300 | 200 | 300 |
| 14 | 1.1.3.2 | Revisar Cronograma e Orçamento Preliminares |  | 0.06d | 2021-10-07 11:00 A | 2021-10-07 11:30 A | 13 | 100% |  | 2021-10-07 11:00 | 2021-10-07 12:00 | 0.12d |  | Jubeto | 0.5h | 0.5h | 50 | 100 | 50 |
| 15 | 1.2 | **Análise** |  | 6.88d | 2021-10-07 13:00 A | 2021-10-18 11:00 A |  | 100% |  | 2021-10-07 13:00 | 2021-10-18 12:00 | 7d |  |  | 29h | 29h | 2,900 | 4,000 | 2,900 |
| 16 | 1.2.1 | **Documento de Requisitos** |  | 5.75d | 2021-10-07 13:00 A | 2021-10-15 10:00 A |  | 100% |  | 2021-10-07 13:00 | 2021-10-15 10:00 | 5.75d |  |  | 21h | 21h | 2,100 | 3,000 | 2,100 |
| 17 | 1.2.1.1 | Reunir-se com Cliente |  | 0.38d | 2021-10-07 13:00 A | 2021-10-07 16:00 A | 14 | 100% |  | 2021-10-07 13:00 | 2021-10-07 18:00 | 0.62d |  | José | 3h | 3h | 300 | 500 | 300 |
| 18 | 1.2.1.2 | Elaborar DRE |  | 1.88d | 2021-10-08 09:00 A | 2021-10-13 17:00 A | 17 | 100% |  | 2021-10-08 09:00 | 2021-10-14 14:00 | 2.5d |  | José | 15h | 15h | 1,500 | 2,000 | 1,500 |
| 19 | 1.2.1.3 | Revisar DRE |  | 0.38d | 2021-10-14 14:00 A | 2021-10-14 17:00 A | 18 | 100% |  | 2021-10-14 14:00 | 2021-10-15 10:00 | 0.62d |  | João | 3h | 3h | 300 | 500 | 300 |
| 20 | 1.2.1.4 | Submeter DRE para Aprovação do Cliente | milestone | 0d | 2021-10-15 10:00 A | 2021-10-15 10:00 A | 19 | 100% |  | 2021-10-15 10:00 | 2021-10-15 10:00 | 0d |  | João |  |  |  |  |  |
| 21 | 1.2.2 | **MRB** |  | 1.12d | 2021-10-15 10:00 A | 2021-10-18 11:00 A |  | 100% |  | 2021-10-15 10:00 | 2021-10-18 12:00 | 1.25d |  |  | 8h | 8h | 800 | 1,000 | 800 |
| 22 | 1.2.2.1 | Elaborar MRB |  | 0.88d | 2021-10-15 10:00 A | 2021-10-15 18:00 A | 20 | 100% |  | 2021-10-15 10:00 | 2021-10-18 10:00 | 1d |  | João | 7h | 7h | 700 | 800 | 700 |
| 23 | 1.2.2.2 | Revisar MRB |  | 0.12d | 2021-10-18 10:00 A | 2021-10-18 11:00 A | 22 | 100% |  | 2021-10-18 10:00 | 2021-10-18 12:00 | 0.25d |  | José | 1h | 1h | 100 | 200 | 100 |
| 24 | 1.3 | **Projeto** |  | 1.25d | 2021-10-18 13:00 A | 2021-10-19 15:00 A |  | 100% |  | 2021-10-18 13:00 | 2021-10-19 15:00 | 1.25d |  |  | 11h | 11h | 1,100 | 1,000 | 1,100 |
| 25 | 1.3.1 | **Diagrama de Classes** |  | 0.88d | 2021-10-18 13:00 A | 2021-10-19 11:00 A |  | 100% |  | 2021-10-18 13:00 | 2021-10-19 10:00 | 0.75d |  |  | 7h | 7h | 700 | 600 | 700 |
| 26 | 1.3.1.1 | Elaborar Diagrama de Classe | manual | 0.5d | 2021-10-18 13:00 A | 2021-10-18 17:00 A | 23 | 100% |  | 2021-10-18 13:00 | 2021-10-18 17:00 | 0.5d |  | Jubeto | 4h | 4h | 400 | 400 | 400 |
| 27 | 1.3.1.2 | Revisar Diagrama de Classe | manual | 0.12d | 2021-10-18 17:00 A | 2021-10-18 18:00 A | 26 | 100% |  | 2021-10-18 17:00 | 2021-10-18 18:00 | 0.12d |  | Jubeto | 1h | 1h | 100 | 100 | 100 |
| 28 | 1.3.1.3 | Atualizar MRB |  | 0.25d | 2021-10-19 09:00 A | 2021-10-19 11:00 A | 27 | 100% |  | 2021-10-19 09:00 | 2021-10-19 10:00 | 0.12d |  | José | 2h | 2h | 200 | 100 | 200 |

| ID | WBS | Task | Type | Duration | Start | Finish | Predecessors | Complete | Remaining | Baseline start | Baseline finish | Baseline duration | Total slack | Free slack | Resources | Work | Actual work | Cost | Baseline cost | Actual cost |
| --- | --- | --- | --- | --- | --- | --- | --- | --- | --- | --- | --- | --- | --- | --- | --- | --- | --- | --- | --- | --- |
| 29 | 1.3.2 | **Modelo Entidade Relacionamento** |  | 0.5d | 2021-10-19 10:00 A | 2021-10-19 15:00 A |  | 100% |  | 2021-10-19 10:00 | 2021-10-19 15:00 | 0.5d |  |  |  | 4h | 4h | 400 | 400 | 400 |
| 30 | 1.3.2.1 | Elaborar Mer | manual | 0.38d | 2021-10-19 10:00 A | 2021-10-19 14:00 A | 28 | 100% |  | 2021-10-19 10:00 | 2021-10-19 14:00 | 0.38d |  |  | João | 3h | 3h | 300 | 300 | 300 |
| 31 | 1.3.2.2 | Revisar Mer | manual | 0.12d | 2021-10-19 14:00 A | 2021-10-19 15:00 A | 30 | 100% |  | 2021-10-19 14:00 | 2021-10-19 15:00 | 0.12d |  |  | João | 1h | 1h | 100 | 100 | 100 |
| 32 | 1.4 | **Planejamento** |  | 1.38d | 2021-10-19 15:00 A | 2021-10-20 18:00 A |  | 100% |  | 2021-10-19 15:00 | 2021-10-20 17:00 | 1.25d |  |  |  | 13h | 13h | 1,300 | 1,600 | 1,300 |
| 33 | 1.4.1 | Elaborar Estimativa de Tamanho Definitiva | manual | 0.5d | 2021-10-19 15:00 A | 2021-10-20 10:00 A | 31 | 100% |  | 2021-10-19 15:00 | 2021-10-20 11:00 | 0.62d |  |  | Jubeto | 4h | 4h | 400 | 500 | 400 |
| 34 | 1.4.2 | Elaborar Cronograma Definitivo | manual | 0.75d | 2021-10-20 11:00 A | 2021-10-20 18:00 A | 33 | 100% |  | 2021-10-20 11:00 | 2021-10-20 17:00 | 0.62d |  |  | Jubeto | 6h | 6h | 600 | 500 | 600 |
| 35 | 1.4.3 | Elaborar Orçamento Definitivo | manual | 0.38d | 2021-10-19 15:00 A | 2021-10-19 18:00 A |  | 100% |  | 2021-10-19 15:00 | 2021-10-20 12:00 | 0.75d |  |  | Jubeto | 3h | 3h | 300 | 600 | 300 |
| 36 | 1.5 | **Desenvolvimento** |  | 5.06d | 2021-11-24 09:00 A | 2021-12-01 09:30 |  | 36% | 3.23d | 2021-11-24 09:00 | 2021-12-01 09:30 | 5.06d | 0d |  |  | 134h | 35h | 12,900 | 12,900 | 3,500 |
| 37 | 1.5.1 | **Release 01** |  | 1d | 2021-11-24 09:00 A | 2021-11-24 18:00 A |  | 100% |  | 2021-11-24 09:00 | 2021-11-24 18:00 | 1d |  |  |  | 35h | 35h | 3,500 | 3,500 | 3,500 |
| 38 | 1.5.1.1 | **Implementação** |  | 0.56d | 2021-11-24 09:00 A | 2021-11-24 14:30 A |  | 100% |  | 2021-11-24 09:00 | 2021-11-24 09:00 | 0d |  |  |  | 33h | 33h | 3,300 | 3,300 | 3,300 |
| 39 | 1.5.1.1.1 | **Implementar RFC01 - Manter Administrador** |  | 0.56d | 2021-11-24 09:00 A | 2021-11-24 14:30 A |  | 100% |  | 2021-11-24 09:00 | 2021-11-24 09:00 | 0d |  |  |  | 16.5h | 16.5h | 1,650 | 1,650 | 1,650 |
| 40 | 1.5.1.1.1.1 | Implementar RF01 - Incluir administrador | manual | 0.5d | 2021-11-24 09:00 A | 2021-11-24 14:00 A |  | 100% |  | 2021-11-24 09:00 | 2021-11-24 14:00 | 0.5d |  |  | João | 4h | 4h | 400 | 400 | 400 |
| 41 | 1.5.1.1.1.2 | Implementar RF02 - Editar administrador | manual | 0.56d | 2021-11-24 09:00 A | 2021-11-24 14:30 A |  | 100% |  | 2021-11-24 09:00 | 2021-11-24 14:30 | 0.56d |  |  | João | 4.5h | 4.5h | 450 | 450 | 450 |
| 42 | 1.5.1.1.1.3 | Implementar RF03 - Consultar administrador | manual | 0.5d | 2021-11-24 09:00 A | 2021-11-24 14:00 A |  | 100% |  | 2021-11-24 09:00 | 2021-11-24 14:00 | 0.5d |  |  | João | 4h | 4h | 400 | 400 | 400 |
| 43 | 1.5.1.1.1.4 | Implementar RF04 - Remover administrador | manual | 0.5d | 2021-11-24 09:00 A | 2021-11-24 14:00 A |  | 100% |  | 2021-11-24 09:00 | 2021-11-24 14:00 | 0.5d |  |  | João | 4h | 4h | 400 | 400 | 400 |
| 44 | 1.5.1.1.2 | **Implementar RFC02 - Manter Usuário** |  | 0.56d | 2021-11-24 09:00 A | 2021-11-24 14:30 A |  | 100% |  | 2021-11-24 09:00 | 2021-11-24 09:00 | 0d |  |  |  | 16.5h | 16.5h | 1,650 | 1,650 | 1,650 |
| 45 | 1.5.1.1.2.1 | Implementar RF05 - Incluir usuário | manual | 0.5d | 2021-11-24 09:00 A | 2021-11-24 14:00 A |  | 100% |  | 2021-11-24 09:00 | 2021-11-24 14:00 | 0.5d |  |  | José | 4h | 4h | 400 | 400 | 400 |
| 46 | 1.5.1.1.2.2 | Implementar RF06 - Editar usuário | manual | 0.56d | 2021-11-24 09:00 A | 2021-11-24 14:30 A |  | 100% |  | 2021-11-24 09:00 | 2021-11-24 14:30 | 0.56d |  |  | José | 4.5h | 4.5h | 450 | 450 | 450 |
| 47 | 1.5.1.1.2.3 | Implementar RF07 - Consultar usuário | manual | 0.5d | 2021-11-24 09:00 A | 2021-11-24 14:00 A |  | 100% |  | 2021-11-24 09:00 | 2021-11-24 14:00 | 0.5d |  |  | José | 4h | 4h | 400 | 400 | 400 |
| 48 | 1.5.1.1.2.4 | Implementar RF08 - Remover usuário | manual | 0.5d | 2021-11-24 09:00 A | 2021-11-24 14:00 A |  | 100% |  | 2021-11-24 09:00 | 2021-11-24 14:00 | 0.5d |  |  | José | 4h | 4h | 400 | 400 | 400 |
| 49 | 1.5.1.2 | **Teste** |  | 1d | 2021-11-24 09:00 A | 2021-11-24 18:00 A |  | 100% |  | 2021-11-24 09:00 | 2021-11-24 18:00 | 1d |  |  |  | 2h | 2h | 200 | 200 | 200 |
| 50 | 1.5.1.2.1 | Testar RFC01 | manual | 1d | 2021-11-24 09:00 A | 2021-11-24 18:00 A | 39 | 100% |  | 2021-11-24 09:00 | 2021-11-24 18:00 | 1d |  |  | Jubeto | 1h | 1h | 100 | 100 | 100 |
| 51 | 1.5.1.2.2 | Testar RFC02 | manual | 1d | 2021-11-24 09:00 A | 2021-11-24 18:00 A | 44 | 100% |  | 2021-11-24 09:00 | 2021-11-24 18:00 | 1d |  |  | Jubeto | 1h | 1h | 100 | 100 | 100 |
| 52 | 1.5.2 | **Release 02** |  | 5.06d | 2021-11-24 09:00 | 2021-12-01 09:30 |  |  |  | 2021-11-24 09:00 | 2021-12-01 09:30 | 5.06d | 0d |  |  | 99h |  | 9,400 | 9,400 |  |
| 53 | 1.5.2.1 | **Implementação** |  | 2.25d | 2021-11-24 09:00 | 2021-11-26 11:00 |  |  |  | 2021-11-24 09:00 | 2021-11-26 11:00 | 2.25d | 1d |  |  | 91h |  | 8,600 | 8,600 |  |
| 54 | 1.5.2.1.1 | **Implementar RFC03 - Manter Produtos** |  | 0d | 2021-11-24 09:00 | 2021-11-24 09:00 |  |  |  | 2021-11-24 09:00 | 2021-11-24 09:00 | 0d | 4.06d | 0d |  | 16.5h |  | 1,650 | 1,650 |  |
| 55 | 1.5.2.1.1.1 | Implementar RF09 - Incluir produto | manual | 0.5d | 2021-11-24 09:00 | 2021-11-24 14:00 |  |  |  | 2021-11-24 09:00 | 2021-11-24 14:00 | 0.5d |  |  | Jubeto | 4h |  | 400 | 400 |  |
| 56 | 1.5.2.1.1.2 | Implementar RF10 - Editar produto | manual | 0.56d | 2021-11-24 09:00 | 2021-11-24 14:30 |  |  |  | 2021-11-24 09:00 | 2021-11-24 14:30 | 0.56d |  |  | Jubeto | 4.5h |  | 450 | 450 |  |
| 57 | 1.5.2.1.1.3 | Implementar RF11 - Procurar produto | manual | 0.5d | 2021-11-24 09:00 | 2021-11-24 14:00 |  |  |  | 2021-11-24 09:00 | 2021-11-24 14:00 | 0.5d |  |  | Jubeto | 4h |  | 400 | 400 |  |
| 58 | 1.5.2.1.1.4 | Implementar RF12 - Remover produto | manual | 0.5d | 2021-11-24 09:00 | 2021-11-24 14:00 |  |  |  | 2021-11-24 09:00 | 2021-11-24 14:00 | 0.5d |  |  | Jubeto | 4h |  | 400 | 400 |  |

| ID | WBS | Task | Type | Duration | Start | Finish | Predecessors | Baseline start | Baseline finish | Baseline duration | Total slack | Free slack | Resources | Work | Cost | Baseline cost |
| --- | --- | --- | --- | --- | --- | --- | --- | --- | --- | --- | --- | --- | --- | --- | --- | --- |
| 59 | 1.5.2.1.2 | **Implementar RFC04 - Manter Transportadora** |  | 0d | 2021-11-24 09:00 | 2021-11-24 09:00 |  | 2021-11-24 09:00 | 2021-11-24 09:00 | 0d | 4.06d | 0d |  | 16.5h | 1,650 | 1,650 |
| 60 | 1.5.2.1.2.1 | Implementar RF13 - Incluir transportadora | manual | 0.5d | 2021-11-24 09:00 | 2021-11-24 14:00 |  | 2021-11-24 09:00 | 2021-11-24 14:00 | 0.5d |  |  | João | 4h | 400 | 400 |
| 61 | 1.5.2.1.2.2 | Implementar RF14 - Editar transportadora | manual | 0.56d | 2021-11-24 09:00 | 2021-11-24 14:30 |  | 2021-11-24 09:00 | 2021-11-24 14:30 | 0.56d |  |  | João | 4.5h | 450 | 450 |
| 62 | 1.5.2.1.2.3 | Implementar RF15 - Consultar transportadora | manual | 0.5d | 2021-11-24 09:00 | 2021-11-24 14:00 |  | 2021-11-24 09:00 | 2021-11-24 14:00 | 0.5d |  |  | João | 4h | 400 | 400 |
| 63 | 1.5.2.1.2.4 | Implementar RF16 - Remover transportadora | manual | 0.5d | 2021-11-24 09:00 | 2021-11-24 14:00 |  | 2021-11-24 09:00 | 2021-11-24 14:00 | 0.5d |  |  | João | 4h | 400 | 400 |
| 64 | 1.5.2.1.3 | **Implementar RFC05 - Realizar Compras** |  | 0d | 2021-11-24 09:00 | 2021-11-24 09:00 |  | 2021-11-24 09:00 | 2021-11-24 09:00 | 0d | 3d | 0d |  | 16.5h | 1,650 | 1,650 |
| 65 | 1.5.2.1.3.1 | Implementar RF17 - Fazer compra | manual | 0.5d | 2021-11-24 09:00 | 2021-11-24 14:00 |  | 2021-11-24 09:00 | 2021-11-24 14:00 | 0.5d |  |  | José | 4h | 400 | 400 |
| 66 | 1.5.2.1.3.2 | Implementar RF18 - Editar compra | manual | 0.56d | 2021-11-24 09:00 | 2021-11-24 14:30 |  | 2021-11-24 09:00 | 2021-11-24 14:30 | 0.56d |  |  | José | 4.5h | 450 | 450 |
| 67 | 1.5.2.1.3.3 | Implementar RF19 - Consultar compra | manual | 0.5d | 2021-11-24 09:00 | 2021-11-24 14:00 |  | 2021-11-24 09:00 | 2021-11-24 14:00 | 0.5d |  |  | José | 4h | 400 | 400 |
| 68 | 1.5.2.1.3.4 | Implementar RF20 - Remover compra | manual | 0.5d | 2021-11-24 09:00 | 2021-11-24 14:00 |  | 2021-11-24 09:00 | 2021-11-24 14:00 | 0.5d |  |  | José | 4h | 400 | 400 |
| 69 | 1.5.2.1.4 | Implementar RFC06 - Manter Avaliações |  | 1d | 2021-11-24 09:00 | 2021-11-24 18:00 |  | 2021-11-24 09:00 | 2021-11-24 18:00 | 1d | 3.06d | 0d |  | 5h |  |  |
| 70 | 1.5.2.1.5 | **Implementar RFC07 - Emitir Relatórios** |  | 0d | 2021-11-24 09:00 | 2021-11-24 09:00 |  | 2021-11-24 09:00 | 2021-11-24 09:00 | 0d | 4.06d | 0d |  | 22h | 2,200 | 2,200 |
| 71 | 1.5.2.1.5.1 | Implementar RF21 - Emitir relatório de categorias mais vendidas | manual | 0.88d | 2021-11-24 09:00 | 2021-11-24 17:00 |  | 2021-11-24 09:00 | 2021-11-24 17:00 | 0.88d |  |  | Jubeto | 7h | 700 | 700 |
| 72 | 1.5.2.1.5.2 | Implementar RF22 - Emitir relatório de produtos mais bem avaliados | manual | 0.88d | 2021-11-24 09:00 | 2021-11-24 17:00 |  | 2021-11-24 09:00 | 2021-11-24 17:00 | 0.88d |  |  | Jubeto | 7h | 700 | 700 |
| 73 | 1.5.2.1.5.3 | Implementar RF23 - Emitir relatório de categorias mais populares | manual | 1d | 2021-11-24 09:00 | 2021-11-24 18:00 |  | 2021-11-24 09:00 | 2021-11-24 18:00 | 1d |  |  | Jubeto | 8h | 800 | 800 |
| 74 | 1.5.2.1.6 | Implementar RNF01 - Criptografar a senha armazenada no banco de dados |  | 0.62d | 2021-11-24 09:00 | 2021-11-24 15:00 |  | 2021-11-24 09:00 | 2021-11-24 15:00 | 0.62d | 2.25d | 0d | Jubeto | 5h | 500 | 500 |
| 75 | 1.5.2.1.7 | Implementar RNF02 - Limitar o número de tentativas de login malsucedidas em 5 |  | 0.62d | 2021-11-25 15:00 | 2021-11-26 11:00 |  | 2021-11-25 15:00 | 2021-11-26 11:00 | 0.62d | 1.81d | 0d | Jubeto | 5h | 500 | 500 |
| 76 | 1.5.2.1.8 | Implementar RNF03 - Toda operação deve ser retornada em até 10 segundos |  | 0.56d | 2021-11-25 09:00 | 2021-11-25 14:30 |  | 2021-11-25 09:00 | 2021-11-25 14:30 | 0.56d | 0d |  | Jubeto | 4.5h | 450 | 450 |
| 77 | 1.5.2.2 | **Teste** |  | 5.06d | 2021-11-24 09:00 | 2021-12-01 09:30 |  | 2021-11-24 09:00 | 2021-12-01 09:30 | 5.06d | 0d |  |  | 8h | 800 | 800 |
| 78 | 1.5.2.2.1 | Testar RFC03 | manual | 1d | 2021-11-24 09:00 | 2021-11-24 18:00 | 54 | 2021-11-24 09:00 | 2021-11-24 18:00 | 1d |  |  | João | 1h | 100 | 100 |
| 79 | 1.5.2.2.2 | Testar RFC04 | manual | 1d | 2021-11-24 09:00 | 2021-11-24 18:00 | 59 | 2021-11-24 09:00 | 2021-11-24 18:00 | 1d |  |  | José | 1h | 100 | 100 |
| 80 | 1.5.2.2.3 | Testar RFC05 | manual | 1d | 2021-11-24 15:00 | 2021-11-26 10:30 | 64 | 2021-11-24 15:00 | 2021-11-26 10:30 | 1d |  |  | Jubeto | 1h | 100 | 100 |
| 81 | 1.5.2.2.4 | Testar RFC06 | manual | 1d | 2021-11-25 09:00 | 2021-11-25 18:00 | 69 | 2021-11-25 09:00 | 2021-11-25 18:00 | 1d |  |  | João | 1h | 100 | 100 |
| 82 | 1.5.2.2.5 | Testar RFC07 | manual | 1d | 2021-11-24 09:00 | 2021-11-24 18:00 | 70 | 2021-11-24 09:00 | 2021-11-24 18:00 | 1d |  |  | José | 1h | 100 | 100 |
| 83 | 1.5.2.2.6 | Testar RNF01 | manual | 1d | 2021-11-24 15:00 | 2021-11-26 16:30 | 74 | 2021-11-24 15:00 | 2021-11-26 16:30 | 1d |  |  | Jubeto | 1h | 100 | 100 |
| 84 | 1.5.2.2.7 | Testar RNF02 | manual | 1d | 2021-11-26 11:00 | 2021-11-29 11:00 | 75 | 2021-11-26 11:00 | 2021-11-29 11:00 | 1d |  |  | João | 1h | 100 | 100 |
| 85 | 1.5.2.2.8 | Testar RNF03 | manual | 1d | 2021-11-25 14:30 | 2021-12-01 09:30 | 76 | 2021-11-25 14:30 | 2021-12-01 09:30 | 1d |  |  | José | 1h | 100 | 100 |

| ID | WBS | Task | Type | Duration | Start | Finish | Baseline start | Baseline finish | Baseline duration | Total slack | Resources | Work | Cost | Baseline cost |
| --- | --- | --- | --- | --- | --- | --- | --- | --- | --- | --- | --- | --- | --- | --- |
| 86 | 1.6 | **Monitoramento e Controle** |  | 0.69d | 2021-11-24 09:00 | 2021-11-24 15:30 | 2021-11-24 09:00 | 2021-11-24 15:30 | 0.69d | 4.38d |  | 5.5h | 550 | 550 |
| 87 | 1.6.1 | Acompanhar Projeto |  | 0.69d | 2021-11-24 09:00 | 2021-11-24 15:30 | 2021-11-24 09:00 | 2021-11-24 15:30 | 0.69d | 4.38d | João | 5.5h | 550 | 550 |
| 88 | 1.7 | **Gerrencia de Configuração** |  | 0d | 2021-11-24 09:00 | 2021-11-24 09:00 | 2021-11-24 09:00 | 2021-11-24 09:00 | 0d | 5.06d |  |  |  |  |
| 89 | 1.7.1 | Elaborar Branch | milestone | 0d | 2021-11-24 09:00 | 2021-11-24 09:00 | 2021-11-24 09:00 | 2021-11-24 09:00 | 0d | 5.06d | João |  |  |  |
| 90 | 1.7.2 | Elaborar Merge da Branch X para a Trunk | milestone | 0d | 2021-11-24 09:00 | 2021-11-24 09:00 | 2021-11-24 09:00 | 2021-11-24 09:00 | 0d | 5.06d | João |  |  |  |
| 91 | 1.8 | **Fechamento** |  | 2.81d | 2021-11-25 15:30 | 2021-11-30 14:00 | 2021-11-25 15:30 | 2021-11-30 14:00 | 2.81d | 0.56d |  | 16.4h | 1,640 | 1,640 |
| 92 | 1.8.1 | Elaborar Relatório de Lições Aprendidas |  | 1.05d | 2021-11-29 13:36 | 2021-11-30 14:00 | 2021-11-29 13:36 | 2021-11-30 14:00 | 1.05d | 0.56d | José | 8.4h | 840 | 840 |
| 93 | 1.8.2 | Atualizar Base de Dados Histórica |  | 1d | 2021-11-25 15:30 | 2021-11-29 13:36 | 2021-11-25 15:30 | 2021-11-29 13:36 | 1d | 1.61d | José | 8h | 800 | 800 |
| 94 | 1.9 | Controle de Mudança |  | 1.07d | 2021-11-25 15:30 | 2021-11-26 16:06 | 2021-11-25 15:30 | 2021-11-26 16:06 | 1.07d | 2.3d | José | 8.6h | 860 | 860 |
